# SGI

Schedule from MS Project, 2012-09-24 to 2013-01-30.

## Calendars

- Estándar: Mon-Fri 09:00-13:00, 15:00-19:00; Sat-Sun off.

## Resources

| Resource |
| --- |
| CPSAA |
| AF |
| AP1 |
| AP2 |
| DW |
| ABAPER |
| CPS |
| APMOVIL |

## Schedule

| ID | WBS | Task | Type | Duration | Start | Finish | Predecessors | Total slack | Constraint | Resources | Work |
| --- | --- | --- | --- | --- | --- | --- | --- | --- | --- | --- | --- |
| 1 | 1 | **Bitacora de Operaciones** |  | 93d | 2012-09-24 | 2013-01-30 |  | 0d |  |  | 2672h |
| 2 | 1.1 | **Levantamiento de información** |  | 26d | 2012-09-24 | 2012-10-29 |  | 0d |  |  | 720h |
| 3 | 1.1.1 | **Reunirse con usuarios para levantamiento de información** |  | 10d | 2012-09-24 | 2012-10-05 |  | 25d |  | CPSAA; AF; AP1 | 240h |
| 4 | 1.1.1.1 | 1 |  | 1d | 2012-09-24 | 2012-09-24 |  | 34d | start no earlier than 2012-09-24 |  |  |
| 5 | 1.1.1.2 | 2 |  | 1d | 2012-09-25 | 2012-09-25 |  | 33d | start no earlier than 2012-09-25 |  |  |
| 6 | 1.1.1.3 | 3 |  | 1d | 2012-09-26 | 2012-09-26 |  | 32d | start no earlier than 2012-09-26 |  |  |
| 7 | 1.1.1.4 | 4 |  | 1d | 2012-09-27 | 2012-09-27 |  | 31d | start no earlier than 2012-09-27 |  |  |
| 8 | 1.1.1.5 | 5 |  | 1d | 2012-09-28 | 2012-09-28 |  | 30d | start no earlier than 2012-09-28 |  |  |
| 9 | 1.1.1.6 | 6 |  | 1d | 2012-10-01 | 2012-10-01 |  | 29d | start no earlier than 2012-09-29 |  |  |
| 10 | 1.1.1.7 | 9 |  | 1d | 2012-10-02 | 2012-10-02 |  | 28d | start no earlier than 2012-10-02 |  |  |
| 11 | 1.1.1.8 | 10 |  | 1d | 2012-10-03 | 2012-10-03 |  | 27d | start no earlier than 2012-10-03 |  |  |
| 12 | 1.1.1.9 | 11 |  | 1d | 2012-10-04 | 2012-10-04 |  | 26d | start no earlier than 2012-10-04 |  |  |
| 13 | 1.1.1.10 | 12 |  | 1d | 2012-10-05 | 2012-10-05 |  | 25d | start no earlier than 2012-10-05 |  |  |
| 14 | 1.1.2 | Realizar formularios de aplicación |  | 10d | 2012-09-24 | 2012-10-05 |  | 25d | start no earlier than 2012-09-24 | AF | 80h |
| 15 | 1.1.3 | Elaborar BBP |  | 14d | 2012-09-24 | 2012-10-11 |  | 0d | start no earlier than 2012-09-24 | AF | 112h |
| 16 | 1.1.4 | **Definición de arquitectura de aplicación** |  | 12d | 2012-10-12 | 2012-10-29 | 15 | 0d |  |  | 288h |
| 17 | 1.1.4.1 | Coordinar definición de arquitectura de aplicación |  | 1d | 2012-10-12 | 2012-10-12 |  | 0d |  | CPSAA; AF; AP1 | 24h |
| 18 | 1.1.4.2 | Definir modelo lógico |  | 3d | 2012-10-15 | 2012-10-17 | 17 | 0d |  | CPSAA; AF; AP1 | 72h |
| 19 | 1.1.4.3 | Definir RFCs |  | 4d | 2012-10-18 | 2012-10-23 | 18 | 0d |  | CPSAA; AF; AP1 | 96h |
| 20 | 1.1.4.4 | Definir integración con SGCP |  | 4d | 2012-10-24 | 2012-10-29 | 19 | 0d |  | CPSAA; AF; AP1 | 96h |
| 21 | 1.2 | **Aprobación de BBP, formularios de aplicación y modelo lógico** |  | 9d | 2012-10-30 | 2012-11-09 | 16 | 0d |  |  | 112h |
| 22 | 1.2.1 | Revisar BBP con formularios de aplicación |  | 2d | 2012-10-30 | 2012-10-31 |  | 0d | start no earlier than 2012-08-24 | CPSAA | 16h |
| 23 | 1.2.2 | Revisar modelo lógico |  | 1d | 2012-11-01 | 2012-11-01 | 22 | 0d |  | CPSAA | 8h |
| 24 | 1.2.3 | Realizar ajustes al BBP |  | 5d | 2012-11-02 | 2012-11-08 | 23 | 0d |  | AF; AP1 | 80h |
| 25 | 1.2.4 | Aprobación final | milestone | 1d | 2012-11-09 | 2012-11-09 | 24 | 0d |  | CPSAA | 8h |

Notes:
- 14: -Uso de herramienta para dibujar los formularios. Esto no implica la parte de diseño gráfico.
- 15: -Despues de los 10 días de levantamiento de información en conjunto con la elaboración del BBP, se consideran días adicionales (trabajados en Lima) para realizar ajustes y completar definiciones del modulo de seguridad (definición de roles)
- 16: -Usar librerías estandares como jquery / -Framework:spring mvc, hibernate, etc. Se requiere reunión con Miguel Ortiz para ver preferencias.
- 18: -Mejorar modelo lógico de PM (SAP)
- 19: -Incluye definición de parámetros enviados desde la nueva aplicación a SAP, y datos insertados en SAP.
- 20: -Definir en qué tablas del SGCP se registrará la data de cambio de equipo y producto desde la nueva aplicación. Y que accesos se otorgarán. / -Definir desde que tablas del SGCP se obtendrá la información para la generación de reportes.

| ID | WBS | Task | Type | Duration | Start | Finish | Predecessors | Total slack | Free slack | Resources | Work |
| --- | --- | --- | --- | --- | --- | --- | --- | --- | --- | --- | --- |
| 26 | 1.3 | **Desarrollo** |  | 30d | 2012-11-12 | 2012-12-21 | 2, 21 | 0d |  |  | 864h |
| 27 | 1.3.1 | **Diseño de aplicación Web** |  | 14d | 2012-11-12 | 2012-11-29 |  | 39d | 11d |  | 112h |
| 28 | 1.3.1.1 | Proponer línea gráfica de la aplicación |  | 3d | 2012-11-12 | 2012-11-14 |  | 39d | 0d | DW | 24h |
| 29 | 1.3.1.2 | Aprobar Línea Gráfica | milestone | 2d | 2012-11-15 | 2012-11-16 | 28 | 39d | 0d | CPSAA | 16h |
| 30 | 1.3.1.3 | Realizar prototipos con diseño gráfico |  | 6d | 2012-11-19 | 2012-11-26 | 29 | 39d | 0d | DW | 48h |
| 31 | 1.3.1.4 | Aprobar prototipos | milestone | 3d | 2012-11-27 | 2012-11-29 | 30 | 39d |  | CPSAA | 24h |
| 32 | 1.3.2 | **Aplicación Web** |  | 25d | 2012-11-12 | 2012-12-14 |  | 28d | 0d |  | 592h |
| 33 | 1.3.2.1 | **Implementar arquitectura** |  | 4d | 2012-11-12 | 2012-11-15 |  | 28d | 0d |  | 64h |
| 34 | 1.3.2.1.1 | Implementar arquitectura |  | 1d | 2012-11-12 | 2012-11-12 |  | 28d | 0d | AP2 | 8h |
| 35 | 1.3.2.1.2 | Implementar modelo lógico |  | 4d | 2012-11-12 | 2012-11-15 |  | 28d |  | AP1 | 32h |
| 36 | 1.3.2.1.3 | Implementar ambiente para pruebas unitarias |  | 3d | 2012-11-13 | 2012-11-15 | 34 | 28d |  | AP2 | 24h |
| 37 | 1.3.2.2 | Implementar modulo de seguridad |  | 4d | 2012-11-16 | 2012-11-21 | 33 | 28d | 0d | AP2 | 32h |
| 38 | 1.3.2.3 | **Implementar RFCs** |  | 5d | 2012-11-12 | 2012-11-16 |  | 48d |  | ABAPER | 40h |
| 39 | 1.3.2.3.1 | Implementar RFC para creación de avisos |  | 5d | 2012-11-12 | 2012-11-16 |  | 48d |  |  |  |
| 40 | 1.3.2.4 | **Modulo ocurrencias** |  | 5d | 2012-11-16 | 2012-11-22 | 33 | 44d |  | AP1 | 40h |
| 41 | 1.3.2.4.1 | Implementar modulo |  | 5d | 2012-11-16 | 2012-11-22 |  | 44d |  |  |  |
| 42 | 1.3.2.4.2 | Realizar pruebas unitarias |  | 5d | 2012-11-16 | 2012-11-22 |  | 44d |  |  |  |
| 43 | 1.3.2.5 | **Modulo Alertas** |  | 7d | 2012-11-22 | 2012-11-30 | 37 | 28d | 0d | AP2 | 56h |
| 44 | 1.3.2.5.1 | Implementar modulo |  | 4d | 2012-11-22 | 2012-11-27 |  | 28d | 0d |  |  |
| 45 | 1.3.2.5.2 | Realizar pruebas unitarias |  | 4d | 2012-11-22 | 2012-11-27 |  | 28d | 0d |  |  |
| 46 | 1.3.2.5.3 | Implementar webservice |  | 3d | 2012-11-28 | 2012-11-30 | 44, 45 | 28d |  |  |  |
| 47 | 1.3.2.6 | **Funcionalidad de paradas** |  | 6d | 2012-11-12 | 2012-11-19 |  | 28d | 0d | AP1 | 48h |
| 48 | 1.3.2.6.1 | Implementar funcionalidad |  | 6d | 2012-11-12 | 2012-11-19 |  | 28d |  |  |  |
| 49 | 1.3.2.6.2 | Realizar pruebas unitarias |  | 6d | 2012-11-12 | 2012-11-19 |  | 28d |  |  |  |

Notes:
- 35: -Implica realizar una precarga de la data de PM (SAP)
- 37: -Funcionalidad para gestión de roles y creación de tablas de usuario (correo electronico, imei, sms)
- 43: -Implementar funcionalidad que permite crear tipos de alertas y que estas sean asignadas a roles de usuarios
- 46: -Para facilitar programación al modulo de movilidad. / -Utilizar REST. / -Crear parada, notificar alerta, login.
- 47: -Generación de alertas cuando la ocurrencia es del tipo parada. / -De acuerdo al tipo de falla replicar el aviso en SAP. Implementar llamada a RFCs. / *Proponer validación de generación de avisos, en caso el usuario se equivoque.

| ID | WBS | Task | Duration | Start | Finish | Predecessors | Total slack | Free slack | Resources | Work |
| --- | --- | --- | --- | --- | --- | --- | --- | --- | --- | --- |
| 50 | 1.3.2.7 | **Funcionalidad de cambio de equipo** | 5d | 2012-12-03 | 2012-12-07 | 43 | 28d | 0d | AP2 | 40h |
| 51 | 1.3.2.7.1 | Implementar modulo | 5d | 2012-12-03 | 2012-12-07 |  | 28d |  |  |  |
| 52 | 1.3.2.7.2 | Realizar pruebas unitarias | 5d | 2012-12-03 | 2012-12-07 |  | 28d |  |  |  |
| 53 | 1.3.2.8 | **Funcionalidad de cambio de producto** | 5d | 2012-12-10 | 2012-12-14 | 50 | 28d |  | AP2 | 40h |
| 54 | 1.3.2.8.1 | Implementar modulo | 5d | 2012-12-10 | 2012-12-14 |  | 28d |  |  |  |
| 55 | 1.3.2.8.2 | Realizar pruebas unitarias | 5d | 2012-12-10 | 2012-12-14 |  | 28d |  |  |  |
| 56 | 1.3.2.9 | **Modulo Reportes** | 19d | 2012-11-20 | 2012-12-14 | 47 | 28d |  | AP1 | 152h |
| 57 | 1.3.2.9.1 | Implementar modulo | 15d | 2012-11-20 | 2012-12-10 |  | 28d | 0d |  |  |
| 58 | 1.3.2.9.2 | Realizar pruebas unitarias | 4d | 2012-12-11 | 2012-12-14 | 57 | 28d |  |  |  |
| 59 | 1.3.2.10 | **Modulo Movilidad** | 5d | 2012-12-03 | 2012-12-07 | 43 | 33d |  | APMOVIL | 80h |
| 60 | 1.3.2.10.1 | Implementar cliente android | 5d | 2012-12-03 | 2012-12-07 |  | 33d |  | APMOVIL | 40h |
| 61 | 1.3.3 | **Integración** | 5d | 2012-12-17 | 2012-12-21 | 32, 27 | 28d |  |  |  |
| 62 | 1.3.3.1 | Integrar modulos | 5d | 2012-12-17 | 2012-12-21 |  | 28d |  |  |  |
| 63 | 1.3.4 | **Documentación** | 20d | 2012-11-12 | 2012-12-07 |  | 0d |  | AF | 160h |
| 64 | 1.3.4.1 | Realizar plan de pruebas | 1d | 2012-11-12 | 2012-11-12 |  | 0d |  |  |  |
| 65 | 1.3.4.2 | Realizar casos de prueba | 8d | 2012-11-13 | 2012-11-22 | 64 | 0d |  |  |  |
| 66 | 1.3.4.3 | Realizar manual de usuario | 8d | 2012-11-23 | 2012-12-04 | 65 | 0d |  |  |  |
| 67 | 1.3.4.4 | Realizar diccionario de datos | 3d | 2012-12-05 | 2012-12-07 | 66 | 0d |  |  |  |
| 68 | 1.4 | **Pruebas** | 25d | 2012-12-10 | 2013-01-11 | 67 | 0d |  |  | 720h |
| 69 | 1.4.1 | Pruebas Unitarias | 10d | 2012-12-10 | 2012-12-21 |  | 0d |  | AF; AP1; AP2 | 240h |
| 70 | 1.4.2 | Pruebas Integrales | 15d | 2012-12-24 | 2013-01-11 | 69 | 0d |  | CPSAA; AF; AP1; AP2 | 480h |
| 71 | 1.5 | **Pase a producción** | 1d | 2013-01-14 | 2013-01-14 | 68 | 0d |  | CPSAA | 8h |
| 72 | 1.5.1 | Realizar pase a producción | 1d | 2013-01-14 | 2013-01-14 |  | 0d |  |  |  |
| 73 | 1.6 | **Post-Producción** | 7d | 2013-01-15 | 2013-01-23 | 71 | 0d |  | AP2; AP1 | 112h |
| 74 | 1.6.1 | Realizar actividades de soporte | 7d | 2013-01-15 | 2013-01-23 |  | 0d |  |  |  |

Notes:
- 50: -Se integrará con el SGCP, directamente a la BD.
- 53: -Se integrará con el SGCP, directamente a la BD.
- 56: -Implementar 5 tipos de reporte: pareto, tendencia, pie, barras, texto resumen. / -CPSAA tiene preferencias por alguna librería de reportes?. / -Se requiere exportación a xls, pdf? / -Implementar modulo con SGCP. Conexión directa o por una interfaz?
- 70: -Incluye detección de observaciones y corrección por parte de los analistas programadores.

| ID | WBS | Task | Duration | Start | Finish | Predecessors | Total slack | Constraint | Resources | Work |
| --- | --- | --- | --- | --- | --- | --- | --- | --- | --- | --- |
| 75 | 1.7 | **Capacitación** | 7d | 2013-01-15 | 2013-01-23 | 71 | 5d |  | AF | 56h |
| 76 | 1.7.1 | Realizar capacitación a usuarios | 7d | 2013-01-15 | 2013-01-23 |  | 5d |  |  |  |
| 77 | 1.8 | **Manual Técnico** | 5d | 2013-01-24 | 2013-01-30 | 73 | 0d |  | AP1; AP2 | 80h |
| 78 | 1.8.1 | Realizar documento | 5d | 2013-01-24 | 2013-01-30 |  | 0d | start no earlier than 2012-10-12 |  |  |
